# 直接成本估算

How a schedule from MS Project changed from version to version. A marks actual dates.

## Version 1 (saved 2020-04-24)

Note of the change: 时间、成本规划

| ID | WBS | Task | Duration | Start | Finish | Predecessors |
| --- | --- | --- | --- | --- | --- | --- |
| 1 | 1 | **启动** | 5d | 2020-02-25 | 2020-03-02 |  |
| 2 |  | 组建核心团队 | 1d | 2020-02-25 | 2020-02-25 |  |
| 3 |  | 干系人分析 | 1d | 2020-02-26 | 2020-02-26 |  |
| 4 |  | 里程碑计划 | 1d | 2020-02-27 | 2020-02-27 |  |
| 5 |  | 制定项目章程 | 1d | 2020-02-28 | 2020-02-28 | 2, 3, 4 |
| 6 |  | 项目启动大会 | 1d | 2020-03-02 | 2020-03-02 | 5 |
| 7 | 2 | **规划** | 24d | 2020-03-03 | 2020-04-03 |  |
| 8 | 2.1 | **规划范围** | 4d | 2020-03-03 | 2020-03-06 |  |
| 9 |  | 制定需求说明书 | 1d | 2020-03-03 | 2020-03-03 | 6 |
| 10 |  | 界面设计 | 1d | 2020-03-04 | 2020-03-04 | 9 |
| 11 |  | 详细设计说明书 | 1d | 2020-03-04 | 2020-03-04 | 9 |
| 12 |  | 范围说明书 | 1d | 2020-03-04 | 2020-03-04 | 9 |
| 13 |  | 创建WBS | 1d | 2020-03-05 | 2020-03-05 | 10, 11, 12 |
| 14 |  | 形成范围基准 | 1d | 2020-03-06 | 2020-03-06 | 13 |
| 15 | 2.2 | **规划时间** | 5d | 2020-03-09 | 2020-03-13 |  |
| 16 |  | 排列工作包顺序 | 1d | 2020-03-09 | 2020-03-09 | 14 |
| 17 |  | 估算资源 | 1d | 2020-03-10 | 2020-03-10 | 16 |
| 18 |  | 估算持续时间 | 1d | 2020-03-11 | 2020-03-11 | 17 |
| 19 |  | 制定进度计划 | 1d | 2020-03-12 | 2020-03-12 | 18 |
| 20 |  | 形成进度基准 | 1d | 2020-03-13 | 2020-03-13 | 19 |
| 21 | 2.3 | **规划成本** | 3d | 2020-03-16 | 2020-03-18 |  |
| 22 |  | 项目成本估算 | 1d | 2020-03-16 | 2020-03-16 | 20 |
| 23 |  | 项目预算 | 1d | 2020-03-17 | 2020-03-17 | 22 |
| 24 |  | 形成范围基准 | 1d | 2020-03-18 | 2020-03-18 | 23 |
| 25 | 2.4 | **规划质量** | 2d | 2020-03-19 | 2020-03-20 |  |
| 26 |  | 制定测试计划 | 1d | 2020-03-19 | 2020-03-19 | 14 |
| 27 |  | 制定测试用例 | 1d | 2020-03-20 | 2020-03-20 | 26 |
| 28 | 2.5 | **规划人力资源** | 2d | 2020-03-23 | 2020-03-24 |  |
| 29 |  | 制定人力资源计划 | 1d | 2020-03-23 | 2020-03-23 | 17 |
| 30 |  | 制定人员配备管理计划 | 1d | 2020-03-24 | 2020-03-24 | 29 |
| 31 | 2.6 | **规划沟通** | 1d | 2020-03-25 | 2020-03-25 |  |
| 32 |  | 制定沟通管理计划 | 1d | 2020-03-25 | 2020-03-25 | 30 |
| 33 | 2.7 | **规划采购** | 2d | 2020-03-26 | 2020-03-27 |  |
| 34 |  | 自制外购分析 | 1d | 2020-03-26 | 2020-03-26 | 17 |
| 35 |  | 制定采购文件 | 1d | 2020-03-27 | 2020-03-27 | 34 |
| 36 | 2.8 | **规划风险** | 5d | 2020-03-30 | 2020-04-03 |  |
| 37 |  | 识别风险 | 1d | 2020-03-30 | 2020-03-30 | 15, 21, 25, 28 |
| 38 |  | 风险分析 | 1d | 2020-03-31 | 2020-03-31 | 37 |
| 39 |  | 制定风险登记册 | 1d | 2020-04-02 | 2020-04-02 | 38 |
| 40 |  | 规划整合 | 1d | 2020-04-03 | 2020-04-03 | 39 |
| 41 | 3 | **执行与监控** | 33d | 2020-04-04 | 2020-05-19 |  |
| 42 |  | 组建项目团队 | 1d | 2020-04-06 | 2020-04-06 | 7 |
| 43 | 3.2 | **项目执行** | 21d | 2020-04-06 | 2020-05-04 |  |
| 44 | 3.2.1 | **用户模块** | 21d | 2020-04-06 | 2020-05-04 |  |
| 45 |  | 注册登录 | 2d | 2020-04-06 | 2020-04-07 | 42 |
| 46 | 3.2.1.2 | **首页** | 4d | 2020-04-07 | 2020-04-10 | 45 |
| 47 |  | 显示热门电影 | 2d | 2020-04-07 | 2020-04-08 |  |
| 48 |  | 显示热门城市 | 1d | 2020-04-09 | 2020-04-09 |  |
| 49 |  | 搜索相关内容 | 1d | 2020-04-10 | 2020-04-10 | 47, 48 |
| 50 | 3.2.1.3 | **影视** | 3d | 2020-04-13 | 2020-04-15 | 45 |
| 51 |  | 显示影视分类 | 1d | 2020-04-13 | 2020-04-13 |  |
| 52 |  | 显示热门影视 | 1d | 2020-04-14 | 2020-04-14 |  |
| 53 |  | 显示影视主题 | 1d | 2020-04-15 | 2020-04-15 |  |
| 54 | 3.2.1.4 | **城市** | 2d | 2020-04-16 | 2020-04-17 | 45 |
| 55 |  | 显示城市地区分类 | 1d | 2020-04-16 | 2020-04-16 |  |
| 56 |  | 显示热门城市 | 1d | 2020-04-17 | 2020-04-17 |  |
| 57 | 3.2.1.5 | **论坛** | 5d | 2020-04-20 | 2020-04-24 | 45 |
| 58 |  | 发布帖子 | 1d | 2020-04-20 | 2020-04-20 |  |
| 59 |  | 显示我发出的帖子 | 1d | 2020-04-21 | 2020-04-21 | 58 |
| 60 |  | 编辑帖子 | 1d | 2020-04-22 | 2020-04-22 | 59 |
| 61 |  | 查看其他用户的帖子 | 1d | 2020-04-23 | 2020-04-23 |  |
| 62 |  | 转发、点赞、评论帖子 | 1d | 2020-04-24 | 2020-04-24 | 61 |
| 63 | 3.2.1.6 | **个人** | 4d | 2020-04-27 | 2020-04-30 | 45 |
| 64 |  | 显示我的路线 | 1d | 2020-04-27 | 2020-04-27 |  |
| 65 |  | 显示我的电影 | 1d | 2020-04-27 | 2020-04-27 |  |
| 66 |  | 显示我的城市 | 1d | 2020-04-27 | 2020-04-27 |  |
| 67 |  | 显示我的场记 | 1d | 2020-04-28 | 2020-04-28 |  |
| 68 |  | 编辑资料 | 1d | 2020-04-28 | 2020-04-28 |  |
| 69 |  | 签到领积分 | 1d | 2020-04-28 | 2020-04-28 |  |
| 70 |  | 显示积分排行榜 | 1d | 2020-04-29 | 2020-04-29 | 69 |

| ID | WBS | Task | Duration | Start | Finish | Predecessors |
| --- | --- | --- | --- | --- | --- | --- |
| 71 |  | 设置 | 1d | 2020-04-30 | 2020-04-30 |  |
| 72 | 3.3 | **项目监控** | 5d | 2020-04-27 | 2020-05-01 |  |
| 73 |  | 各项指标监控 | 1d | 2020-04-27 | 2020-04-27 | 42 |
| 74 |  | 监控评审 | 1d | 2020-04-28 | 2020-04-28 | 73 |
| 75 |  | 变更评审 | 2d | 2020-04-29 | 2020-04-30 | 74 |
| 76 |  | 例会 | 2d | 2020-04-30 | 2020-05-01 | 42 |
| 77 | 3.4 | **管理干系人** | 3d | 2020-05-01 | 2020-05-05 |  |
| 78 |  | 发布项目信息 | 1d | 2020-05-01 | 2020-05-01 | 42 |
| 79 |  | 报告监控指标 | 1d | 2020-05-04 | 2020-05-04 | 42 |
| 80 |  | 干系人沟通 | 1d | 2020-05-05 | 2020-05-05 | 42 |
| 81 | 3.5 | **团队建设** | 3d | 2020-05-06 | 2020-05-08 |  |
| 82 |  | 培训 | 1d | 2020-05-06 | 2020-05-06 | 42 |
| 83 |  | 娱乐活动 | 1d | 2020-05-07 | 2020-05-07 | 42 |
| 84 |  | 沟通 | 1d | 2020-05-08 | 2020-05-08 | 42 |
| 85 |  | 采购 | 1d | 2020-05-08 | 2020-05-08 | 42 |
| 86 |  | 项目验收 | 1d | 2020-05-11 | 2020-05-11 | 43 |
| 87 | 4 | **收尾** | 2d | 2020-06-01 | 2020-06-02 |  |
| 88 |  | 项目终验 | 1d | 2020-06-01 | 2020-06-01 | 86 |
| 89 |  | 结束采购 | 1d | 2020-06-01 | 2020-06-01 | 86 |
| 90 |  | 项目内部收尾 | 1d | 2020-06-02 | 2020-06-02 | 86 |

## Version 2 (saved 2020-04-24)

Note of the change: 质量、人力资源规划

Last finish stays 2020-06-02.

Changed:

| ID | Task | Other |
| --- | --- | --- |
| 2 | 组建核心团队 | resources 项目经理; UI专家; 设计专家; 需求专家; 质量专家 → 于旭东; 王予诺; 郑尚姿; 杨迪 |
| 3 | 干系人分析 | resources 项目经理 → 于旭东 |
| 4 | 里程碑计划 | resources 项目经理 → 于旭东 |
| 5 | 制定项目章程 | resources 项目经理 → 于旭东 |
| 6 | 项目启动大会 | resources UI专家; 设计专家; 项目经理; 需求专家; 质量专家 → 王予诺; 于旭东; 郑尚姿; 杨迪 |
| 9 | 制定需求说明书 | resources 需求专家 → 郑尚姿 |
| 10 | 界面设计 | resources UI专家 → 王予诺 |
| 11 | 详细设计说明书 | resources 设计专家 → 王予诺 |
| 12 | 范围说明书 | resources 项目经理 → 于旭东 |
| 13 | 创建WBS | resources 项目经理 → 于旭东 |
| 14 | 形成范围基准 | resources 项目经理 → 于旭东 |
| 16 | 排列工作包顺序 | resources 项目经理 → 于旭东 |
| 17 | 估算资源 | resources 项目经理 → 于旭东 |
| 18 | 估算持续时间 | resources 项目经理 → 于旭东 |
| 19 | 制定进度计划 | resources 项目经理 → 于旭东 |
| 20 | 形成进度基准 | resources 项目经理 → 于旭东 |
| 22 | 项目成本估算 | resources 项目经理 → 于旭东 |
| 23 | 项目预算 | resources 项目经理 → 于旭东 |
| 24 | 形成范围基准 | resources 项目经理 → 于旭东 |
| 26 | 制定测试计划 | resources 质量专家 → 杨迪 |
| 27 | 制定测试用例 | resources 质量专家 → 杨迪 |
| 29 | 制定人力资源计划 | resources 项目经理 → 于旭东 |
| 30 | 制定人员配备管理计划 | resources 项目经理 → 于旭东 |
| 32 | 制定沟通管理计划 | resources 项目经理 → 于旭东 |
| 34 | 自制外购分析 | resources 项目经理 → 于旭东 |
| 35 | 制定采购文件 | resources 项目经理 → 于旭东 |
| 37 | 识别风险 | resources 项目经理 → 于旭东 |
| 38 | 风险分析 | resources 项目经理 → 于旭东 |
| 39 | 制定风险登记册 | resources 项目经理 → 于旭东 |
| 40 | 规划整合 | resources 项目经理 → 于旭东 |
| 42 | 组建项目团队 | resources 项目经理 → 于旭东 |
| 73 | 各项指标监控 | resources 测试专家; 项目经理 → 范钰敏; 于旭东 |
| 74 | 监控评审 | resources 设计专家; 项目经理 → 王予诺; 于旭东 |
| 75 | 变更评审 | resources 设计专家; 项目经理 → 王予诺; 于旭东 |
| 76 | 例会 | resources UI专家; 测试专家 → 王予诺; 范钰敏 |
| 78 | 发布项目信息 | resources 项目经理 → 于旭东 |
| 79 | 报告监控指标 | resources 项目经理 → 于旭东 |
| 80 | 干系人沟通 | resources 项目经理 → 于旭东 |
| 82 | 培训 | resources UI专家; 测试专家 → 王予诺; 范钰敏 |
| 83 | 娱乐活动 | resources UI专家; 测试专家 → 王予诺; 范钰敏 |
| 84 | 沟通 | resources UI专家; 测试专家 → 王予诺; 范钰敏 |
| 85 | 采购 | resources 项目经理 → 于旭东 |
| 86 | 项目验收 | resources UI专家; 设计专家 → 王予诺 |
| 88 | 项目终验 | resources UI专家; 设计专家 → 王予诺 |
| 89 | 结束采购 | resources 项目经理 → 于旭东 |
| 90 | 项目内部收尾 | resources UI专家; 测试专家 → 王予诺; 范钰敏 |

## Version 3 (saved 2020-04-25)

Note of the change: 质量、人力资源规划

Last finish stays 2020-06-02.

Changed:

| ID | Task | Other |
| --- | --- | --- |
| 2 | 组建核心团队 | resources 于旭东; 王予诺; 郑尚姿; 杨迪 → 于旭东; 王予诺; 设计专家; 郑尚姿; 杨迪 |
| 6 | 项目启动大会 | resources 王予诺; 于旭东; 郑尚姿; 杨迪 → 王予诺; 设计专家; 于旭东; 郑尚姿; 杨迪 |
| 11 | 详细设计说明书 | resources 王予诺 → 设计专家 |
| 74 | 监控评审 | resources 王予诺; 于旭东 → 设计专家; 于旭东 |
| 75 | 变更评审 | resources 王予诺; 于旭东 → 设计专家; 于旭东 |
| 86 | 项目验收 | resources 王予诺 → 王予诺; 设计专家 |
| 88 | 项目终验 | resources 王予诺 → 王予诺; 设计专家 |
